# CronogramaRelease1

Schedule from MS Project, 2024-09-23 to 2024-10-25, A marks actual dates.

## Calendars

- Padrão: Mon-Fri 09:00-12:00, 13:00-18:00; Sat-Sun off.

## Resources

| Resource |
| --- |
| João |
| Letícia |
| Cliente |
| Erik |
| Joao |

## Schedule

| ID | WBS | Task | Duration | Start | Finish | Predecessors | Complete | Remaining | Total slack | Resources | Work | Actual work |
| --- | --- | --- | --- | --- | --- | --- | --- | --- | --- | --- | --- | --- |
| 1 | 1 | **Projeto Barbearia** | 24.3d? | 2024-09-23 A | 2024-10-25 |  | 96% | 1.07d? | 0d |  | 136h | 124.5h |
| 2 | 1.1 | **Prospecção** | 1.48d? | 2024-09-23 A | 2024-09-24 A |  | 100% |  |  |  | 11.5h | 11.5h |
| 3 | 1.1.1 | **PTEC** | 1.01d? | 2024-09-23 A | 2024-09-24 A |  | 100% |  |  |  | 8.5h | 8.5h |
| 4 | 1.1.1.1 | Estudar domínio de aplicação | 0.12d | 2024-09-23 A | 2024-09-23 A |  | 100% |  |  | João | 1h | 1h |
| 5 | 1.1.1.2 | Reunir-se com o cliente | 0.25d? | 2024-09-23 A | 2024-09-23 A | 4 | 100% |  |  | Joao [51.5%]; Cliente | 3h | 3h |
| 6 | 1.1.1.3 | Redigir PTEC | 0.52d? | 2024-09-23 A | 2024-09-23 A | 5 | 100% |  |  | Joao | 4h | 4h |
| 7 | 1.1.1.4 | Revisar PTEC | 0.12d? | 2024-09-23 A | 2024-09-24 A | 6 | 100% |  |  | Joao | 0.5h | 0.5h |
| 8 | 1.1.2 | **Estimativa Preliminar de Tamanho** | 1.12d? | 2024-09-23 A | 2024-09-24 A |  | 100% |  |  |  | 0.5h | 0.5h |
| 9 | 1.1.2.1 | Estimar tamanho do projeto | 0.12d? | 2024-09-23 A | 2024-09-24 A | 7 | 100% |  |  | Joao | 0.5h | 0.5h |
| 10 | 1.1.3 | **Cronograma e Orçamento** | 1.48d? | 2024-09-23 A | 2024-09-24 A |  | 100% |  |  |  | 2.5h | 2.5h |
| 11 | 1.1.3.1 | Elaborar cronograma e orçamento preliminares | 0.25d? | 2024-09-23 A | 2024-09-24 A | 9 | 100% |  |  | Letícia | 2h | 2h |
| 12 | 1.1.3.2 | Revisar cronograma e orçamento preliminares | 0.12d? | 2024-09-23 A | 2024-09-24 A | 11 | 100% |  |  | Erik | 0.5h | 0.5h |
| 13 | 1.2 | **Análise** | 7.3d | 2024-09-23 A | 2024-10-02 A | 2 | 100% |  |  |  | 33h | 33h |
| 14 | 1.2.1 | **Documento de Requisitos** | 6.46d | 2024-09-23 A | 2024-10-01 A |  | 100% |  |  |  | 30h | 30h |
| 15 | 1.2.1.1 | Reunir-se com o cliente | 1d | 2024-09-23 A | 2024-09-25 A | 12 | 100% |  |  | Letícia | 3h | 3h |
| 16 | 1.2.1.2 | Elaborar DRE | 2.62d | 2024-09-23 A | 2024-09-27 A | 15 | 100% |  |  | Erik | 21h | 21h |
| 17 | 1.2.1.3 | Revisar DRE | 1d | 2024-09-23 A | 2024-09-30 A | 16 | 100% |  |  | Letícia | 4h | 4h |
| 18 | 1.2.1.4 | Submeter DRE para aprovação do cliente | 1d | 2024-09-23 A | 2024-10-01 A | 17 | 100% |  |  | Letícia | 2h | 2h |
| 19 | 1.2.2 | **MRB** | 7.3d | 2024-09-23 A | 2024-10-02 A |  | 100% |  |  |  | 3h | 3h |
| 20 | 1.2.2.1 | Elaborar MRB | 1d | 2024-09-23 A | 2024-10-02 A | 18 | 100% |  |  | Joao | 2h | 2h |
| 21 | 1.2.2.2 | Revisar MRB | 0.12d | 2024-09-23 A | 2024-09-23 A | 20 | 100% |  |  | Joao | 1h | 1h |
| 22 | 1.3 | **Projeto** | 5d? | 2024-10-02 A | 2024-10-09 A | 13 | 100% |  |  |  | 8h | 8h |
| 23 | 1.3.1 | **Diagrama de Classes** | 3d? | 2024-10-02 A | 2024-10-07 A |  | 100% |  |  |  | 5h | 5h |
| 24 | 1.3.1.1 | Elaborar Diagrama de Classe | 1d? | 2024-10-02 A | 2024-10-03 A | 21 | 100% |  |  | Joao [37.5%] | 3h | 3h |
| 25 | 1.3.1.2 | Revisar Driagrama de Classe | 1d? | 2024-10-03 A | 2024-10-04 A | 24 | 100% |  |  | Letícia [12.5%] | 1h | 1h |
| 26 | 1.3.1.3 | Atualizar MRB | 1d | 2024-10-04 A | 2024-10-07 A | 25 | 100% |  |  | Erik [12.5%] | 1h | 1h |

| ID | WBS | Task | Duration | Start | Finish | Predecessors | Complete | Resources | Work | Actual work |
| --- | --- | --- | --- | --- | --- | --- | --- | --- | --- | --- |
| 27 | 1.3.2 | **Modelo E-R** | 2d? | 2024-10-07 A | 2024-10-09 A |  | 100% |  | 3h | 3h |
| 28 | 1.3.2.1 | Elaborar MER | 1d? | 2024-10-07 A | 2024-10-08 A | 26 | 100% | Letícia [25%] | 2h | 2h |
| 29 | 1.3.2.2 | Revisar MER | 1d? | 2024-10-08 A | 2024-10-09 A | 28 | 100% | Erik [12.5%] | 1h | 1h |
| 30 | 1.4 | **Implementação** | 10d? | 2024-10-09 A | 2024-10-23 A | 22 | 100% |  | 72h | 72h |
| 31 | 1.4.1 | **Release 01** | 3d? | 2024-10-09 A | 2024-10-14 A |  | 100% |  | 14h | 14h |
| 32 | 1.4.1.1 | **Implementação** | 2d? | 2024-10-09 A | 2024-10-11 A |  | 100% |  | 10h | 10h |
| 33 | 1.4.1.1.1 | [RFS01] Cadastrar Usuários | 1d? | 2024-10-09 A | 2024-10-10 A |  | 100% | Joao [12.5%] | 1h | 1h |
| 34 | 1.4.1.1.2 | [RFS02] Consultar Usuários | 1d? | 2024-10-10 A | 2024-10-11 A | 33 | 100% | Joao [12.5%] | 1h | 1h |
| 35 | 1.4.1.1.3 | [RFS03] Atualizar Usuários | 1d? | 2024-10-10 A | 2024-10-11 A | 33 | 100% | Joao [18.8%] | 1.5h | 1.5h |
| 36 | 1.4.1.1.4 | [RFS04] Remover Usuários | 1d? | 2024-10-10 A | 2024-10-11 A | 33 | 100% | Joao [18.8%] | 1.5h | 1.5h |
| 37 | 1.4.1.1.5 | [RFS05] Cadastrar Clientes | 1d? | 2024-10-09 A | 2024-10-10 A |  | 100% | Letícia [12.5%] | 1h | 1h |
| 38 | 1.4.1.1.6 | [RFS06] Consultar Clientes | 1d? | 2024-10-10 A | 2024-10-11 A | 37 | 100% | Letícia [12.5%] | 1h | 1h |
| 39 | 1.4.1.1.7 | [RFS07] Atualizar Clientes | 1d? | 2024-10-10 A | 2024-10-11 A | 37 | 100% | Letícia [18.8%] | 1.5h | 1.5h |
| 40 | 1.4.1.1.8 | [RFS08] Remover Clientes | 1d? | 2024-10-10 A | 2024-10-11 A | 37 | 100% | Letícia [18.8%] | 1.5h | 1.5h |
| 41 | 1.4.1.2 | **Teste** | 2d? | 2024-10-10 A | 2024-10-14 A |  | 100% |  | 4h | 4h |
| 42 | 1.4.1.2.1 | [RFS01] Cadastrar Usuários | 1d? | 2024-10-10 A | 2024-10-11 A | 33 | 100% | Erik [6.2%] | 0.5h | 0.5h |
| 43 | 1.4.1.2.2 | [RFS02] Consultar Usuários | 1d? | 2024-10-11 A | 2024-10-14 A | 34 | 100% | Erik [6.2%] | 0.5h | 0.5h |
| 44 | 1.4.1.2.3 | [RFS03] Atualizar Usuários | 1d? | 2024-10-11 A | 2024-10-14 A | 35 | 100% | Erik [6.2%] | 0.5h | 0.5h |
| 45 | 1.4.1.2.4 | [RFS04] Remover Usuários | 1d? | 2024-10-11 A | 2024-10-14 A | 36 | 100% | Erik [6.2%] | 0.5h | 0.5h |
| 46 | 1.4.1.2.5 | [RFS05] Cadastrar Clientes | 1d? | 2024-10-10 A | 2024-10-11 A | 37 | 100% | Erik [6.2%] | 0.5h | 0.5h |
| 47 | 1.4.1.2.6 | [RFS06] Consultar Clientes | 1d? | 2024-10-11 A | 2024-10-14 A | 38 | 100% | Erik [6.2%] | 0.5h | 0.5h |
| 48 | 1.4.1.2.7 | [RFS07] Atualizar Clientes | 1d? | 2024-10-11 A | 2024-10-14 A | 39 | 100% | Erik [6.2%] | 0.5h | 0.5h |
| 49 | 1.4.1.2.8 | [RFS08] Remover Clientes | 1d? | 2024-10-11 A | 2024-10-14 A | 40 | 100% | Erik [6.2%] | 0.5h | 0.5h |
| 50 | 1.4.2 | **Release 02** | 3d? | 2024-10-14 A | 2024-10-17 A | 31 | 100% |  | 20h | 20h |
| 51 | 1.4.2.1 | **Implementação** | 2d? | 2024-10-14 A | 2024-10-16 A |  | 100% |  | 14h | 14h |
| 52 | 1.4.2.1.1 | [RFS09] Cadastrar Agendamento | 1d? | 2024-10-14 A | 2024-10-15 A |  | 100% | Letícia [18.8%] | 1.5h | 1.5h |
| 53 | 1.4.2.1.2 | [RFS10] Consultar Agendamento | 1d? | 2024-10-15 A | 2024-10-16 A | 52 | 100% | Letícia [18.8%] | 1.5h | 1.5h |
| 54 | 1.4.2.1.3 | [RFS11] Atualizar Agendamento | 1d? | 2024-10-15 A | 2024-10-16 A | 52 | 100% | Letícia [25%] | 2h | 2h |
| 55 | 1.4.2.1.4 | [RFS12] Remover Agendamento | 1d? | 2024-10-15 A | 2024-10-16 A | 52 | 100% | Letícia [25%] | 2h | 2h |
| 56 | 1.4.2.1.5 | [RFS13] Cadastrar Atendimento | 1d? | 2024-10-14 A | 2024-10-15 A |  | 100% | Joao [18.8%] | 1.5h | 1.5h |
| 57 | 1.4.2.1.6 | [RFS14] Consultar Atendimento | 1d? | 2024-10-15 A | 2024-10-16 A | 56 | 100% | Joao [18.8%] | 1.5h | 1.5h |
| 58 | 1.4.2.1.7 | [RFS15] Atualizar Atendimento | 1d? | 2024-10-15 A | 2024-10-16 A | 56 | 100% | Joao [25%] | 2h | 2h |
| 59 | 1.4.2.1.8 | [RFS16] Remover Atendimento | 1d? | 2024-10-15 A | 2024-10-16 A | 56 | 100% | Joao [25%] | 2h | 2h |

| ID | WBS | Task | Duration | Start | Finish | Predecessors | Complete | Resources | Work | Actual work |
| --- | --- | --- | --- | --- | --- | --- | --- | --- | --- | --- |
| 60 | 1.4.2.2 | **Teste** | 2d? | 2024-10-15 A | 2024-10-17 A |  | 100% |  | 6h | 6h |
| 61 | 1.4.2.2.1 | [RFS09] Cadastrar Agendamento | 1d? | 2024-10-15 A | 2024-10-16 A | 52 | 100% | Erik [6.2%] | 0.5h | 0.5h |
| 62 | 1.4.2.2.2 | [RFS10] Consultar Agendamento | 1d? | 2024-10-16 A | 2024-10-17 A | 53 | 100% | Erik [6.2%] | 0.5h | 0.5h |
| 63 | 1.4.2.2.3 | [RFS11] Atualizar Agendamento | 1d? | 2024-10-16 A | 2024-10-17 A | 54 | 100% | Erik [12.5%] | 1h | 1h |
| 64 | 1.4.2.2.4 | [RFS12] Remover Agendamento | 1d? | 2024-10-16 A | 2024-10-17 A | 55 | 100% | Erik [12.5%] | 1h | 1h |
| 65 | 1.4.2.2.5 | [RFS13] Cadastrar Atendimento | 1d? | 2024-10-15 A | 2024-10-16 A | 56 | 100% | Erik [6.2%] | 0.5h | 0.5h |
| 66 | 1.4.2.2.6 | [RFS14] Consultar Atendimento | 1d? | 2024-10-16 A | 2024-10-17 A | 57 | 100% | Erik [6.2%] | 0.5h | 0.5h |
| 67 | 1.4.2.2.7 | [RFS15] Atualizar Atendimento | 1d? | 2024-10-16 A | 2024-10-17 A | 58 | 100% | Erik [12.5%] | 1h | 1h |
| 68 | 1.4.2.2.8 | [RFS16] Remover Atendimento | 1d? | 2024-10-16 A | 2024-10-17 A | 59 | 100% | Erik [12.5%] | 1h | 1h |
| 69 | 1.4.3 | **Release 03** | 4d? | 2024-10-17 A | 2024-10-23 A | 50 | 100% |  | 38h | 38h |
| 70 | 1.4.3.1 | **Implementação** | 3d? | 2024-10-17 A | 2024-10-22 A |  | 100% |  | 25.5h | 25.5h |
| 71 | 1.4.3.1.1 | [RFS17] - Cadastrar Produtos do Estoque | 1d? | 2024-10-17 A | 2024-10-18 A |  | 100% | Joao [25%] | 2h | 2h |
| 72 | 1.4.3.1.2 | [RFS18] - Consultar Produtos do Estoque | 1d? | 2024-10-18 A | 2024-10-21 A | 71 | 100% | Joao [25%] | 2h | 2h |
| 73 | 1.4.3.1.3 | [RFS19] - Atualizar Produtos do Estoque | 1d? | 2024-10-18 A | 2024-10-21 A | 71 | 100% | Joao [25%] | 2h | 2h |
| 74 | 1.4.3.1.4 | [RFS20] - Remover Produtos do Estoque | 1d? | 2024-10-18 A | 2024-10-21 A | 71 | 100% | Joao [25%] | 2h | 2h |
| 75 | 1.4.3.1.5 | [RFS21] - Cadastrar Despesas Financeiras | 1d? | 2024-10-17 A | 2024-10-18 A |  | 100% | Letícia [25%] | 2h | 2h |
| 76 | 1.4.3.1.6 | [RFS22] - Consultar Despesas Financeiras | 1d? | 2024-10-18 A | 2024-10-21 A | 75 | 100% | Letícia [25%] | 2h | 2h |
| 77 | 1.4.3.1.7 | [RFS23] - Atualizar Despesas Financeiras | 1d? | 2024-10-18 A | 2024-10-21 A | 75 | 100% | Letícia [25%] | 2h | 2h |
| 78 | 1.4.3.1.8 | [RFS24] - Remover Despesas Financeiras | 1d? | 2024-10-18 A | 2024-10-21 A | 75 | 100% | Letícia [25%] | 2h | 2h |
| 79 | 1.4.3.1.9 | [RFS25] - Gerar Relatórios de Desempenho | 1d? | 2024-10-21 A | 2024-10-22 A | 71, 72, 73, 74, 75, 76, 77, 78 | 100% | Letícia [68.8%] | 5.5h | 5.5h |
| 80 | 1.4.3.1.10 | [RFS26] - Emitir Guia de Controle de Estoque | 1d? | 2024-10-21 A | 2024-10-22 A | 71, 72, 73, 74 | 100% | Joao [50%] | 4h | 4h |
| 81 | 1.4.3.2 | **Teste** | 3d? | 2024-10-18 A | 2024-10-23 A |  | 100% |  | 12.5h | 12.5h |
| 82 | 1.4.3.2.1 | [RFS17] - Cadastrar Produtos do Estoque | 1d? | 2024-10-18 A | 2024-10-21 A | 71 | 100% | Erik [12.5%] | 1h | 1h |
| 83 | 1.4.3.2.2 | [RFS18] - Consultar Produtos do Estoque | 1d? | 2024-10-21 A | 2024-10-22 A | 72 | 100% | Erik [12.5%] | 1h | 1h |
| 84 | 1.4.3.2.3 | [RFS19] - Atualizar Produtos do Estoque | 1d? | 2024-10-21 A | 2024-10-22 A | 73 | 100% | Erik [12.5%] | 1h | 1h |
| 85 | 1.4.3.2.4 | [RFS20] - Remover Produtos do Estoque | 1d? | 2024-10-21 A | 2024-10-22 A | 74 | 100% | Erik [12.5%] | 1h | 1h |
| 86 | 1.4.3.2.5 | [RFS21] - Cadastrar Despesas Financeiras | 1d? | 2024-10-18 A | 2024-10-21 A | 75 | 100% | Erik [12.5%] | 1h | 1h |
| 87 | 1.4.3.2.6 | [RFS22] - Consultar Despesas Financeiras | 1d? | 2024-10-21 A | 2024-10-22 A | 76 | 100% | Erik [12.5%] | 1h | 1h |
| 88 | 1.4.3.2.7 | [RFS23] - Atualizar Despesas Financeiras | 1d? | 2024-10-21 A | 2024-10-22 A | 77 | 100% | Erik [12.5%] | 1h | 1h |
| 89 | 1.4.3.2.8 | [RFS24] - Remover Despesas Financeiras | 1d? | 2024-10-21 A | 2024-10-22 A | 78 | 100% | Erik [12.5%] | 1h | 1h |
| 90 | 1.4.3.2.9 | [RFS25] - Gerar Relatórios de Desempenho | 1d? | 2024-10-22 A | 2024-10-23 A | 79 | 100% | Erik [31.2%] | 2.5h | 2.5h |
| 91 | 1.4.3.2.10 | [RFS26] - Emitir Guia de Controle de Estoque | 1d? | 2024-10-22 A | 2024-10-23 A | 80 | 100% | Erik [25%] | 2h | 2h |

| ID | WBS | Task | Duration | Start | Finish | Predecessors | Total slack | Resources | Work |
| --- | --- | --- | --- | --- | --- | --- | --- | --- | --- |
| 92 | 1.5 | **Monitoramento e Controle** | 1d? | 2024-10-23 | 2024-10-24 | 30 | 0d |  | 4.5h |
| 93 | 1.5.1 | Acompanhar projeto | 1d? | 2024-10-23 | 2024-10-24 |  | 0d | Joao [56.2%] | 4.5h |
| 94 | 1.6 | **Gerencia de Configuração** | 1d? | 2024-10-24 | 2024-10-25 | 92 | 0d |  | 7h |
| 95 | 1.6.1 | Elaborar Branch | 1d? | 2024-10-24 | 2024-10-25 |  | 0d | Letícia [75%] | 6h |
| 96 | 1.6.2 | Realizar Merge da Branch X para a Trunk | 1d? | 2024-10-24 | 2024-10-25 |  | 0d | Letícia [12.5%] | 1h |
